How a schedule from OmniPlan changed from version to version. A marks actual dates.

## Version 1 (saved 2017-05-08)

| ID | WBS | Task | Predecessors | Constraint |
| --- | --- | --- | --- | --- |
| 1 | 1 | **编码** |  |  |
| 2 | 1.1 | **阶段一：开放能力开发** |  |  |
| 3 |  | 镜像管理 |  | start no earlier than 2017-05-03 |
| 4 |  | 镜像操作流程测试 |  | start no earlier than 2017-05-03 |
| 5 |  | 服务管理 |  | start no earlier than 2017-05-04 |
| 6 | 1.2 | **阶段二：整体流程测试** |  |  |
| 7 |  | CI/CD持续集成 |  | start no earlier than 2017-05-02 |
| 8 |  | mesos+marathon部署测试 |  | start no earlier than 2017-05-04 |
| 9 |  | 日志收集流程测试 | 7 | start no earlier than 2017-05-04 |
| 10 |  | 性能监控流程测试 | 9 | start no earlier than 2017-05-04 |
| 11 |  | 阶段三：项目管理开发 |  |  |
| 12 |  | 阶段四：mesos应用部署 |  | start no earlier than 2017-05-05 |
| 13 |  | 阶段五：整体集成 |  | start no earlier than 2017-05-05 |
| 14 |  | 测试 |  |  |

## Version 2 (saved 2017-05-23)

Note of the change: 修改文档

Complete tasks 0 → 14.

Added:

| ID | Task | Predecessors | Constraint |
| --- | --- | --- | --- |
| 2 | **阶段一** |  | start no earlier than 2017-05-23 |
| 13 | **阶段四：第一轮优化** |  | start no earlier than 2017-05-15 |
| 14 | 项目阶段情况页面开发 |  | start no earlier than 2017-05-15 |
| 15 | 首页项目阶段展现 |  | start no earlier than 2017-05-15 |
| 16 | 首页镜像仓库取收藏TOP10展现 |  | start no earlier than 2017-05-15 |
| 17 | 集群管理界面优化 |  | start no earlier than 2017-05-15 |
| 18 | 项目部署管理和项目运维整合 |  | start no earlier than 2017-05-15 |
| 21 | 阶段二 | 2 | start no earlier than 2017-05-23 |
| 22 | 阶段三 |  | start no earlier than 2017-05-23 |

Changed:

| ID | Task | Complete | Predecessors | Other |
| --- | --- | --- | --- | --- |
| 4 | 镜像管理 | 0% → 100% |  |  |
| 5 | 镜像操作流程测试 | 0% → 100% |  |  |
| 6 | 服务管理 | 0% → 100% |  |  |
| 8 | CI/CD持续集成 | 0% → 100% |  |  |
| 9 | mesos+marathon部署测试 | 0% → 100% |  |  |
| 10 | 日志收集流程测试 | 0% → 100% |  |  |
| 11 | 性能监控流程测试 | 0% → 100% | 10 → none |  |
| 19 | 阶段五：mesos应用部署 | 0% → 100% |  | was named 阶段四：mesos应用部署 |
| 20 | 阶段六：整体集成 | 0% → 100% |  | was named 阶段五：整体集成 |

## Version 3 (saved 2017-05-23)

Note of the change: Merge branch 'dev' of http://192.168.9.48/cmcc/develop-base into dev

Complete tasks 14 → 7.

Removed: 2 阶段一; 21 阶段二; 22 阶段三

Changed:

| ID | Task | Complete | Predecessors |
| --- | --- | --- | --- |
| 10 | 性能监控流程测试 |  | none → 9 |
| 13 | 项目阶段情况页面开发 | 100% → 0% |  |
| 14 | 首页项目阶段展现 | 100% → 0% |  |
| 15 | 首页镜像仓库取收藏TOP10展现 | 100% → 0% |  |
| 16 | 集群管理界面优化 | 100% → 0% |  |
| 17 | 项目部署管理和项目运维整合 | 100% → 0% |  |
| 18 | 阶段五：mesos应用部署 | 100% → 0% |  |
| 19 | 阶段六：整体集成 | 100% → 0% |  |
