How a schedule from OmniPlan changed from version to version. A marks actual dates.

## Version 1 (saved 2017-09-26)

Note of the change: 修改项目进度计划

| ID | WBS | Task | Predecessors | Complete | Constraint |
| --- | --- | --- | --- | --- | --- |
| 1 | 1 | **DevOps项目二期** |  |  | start no earlier than 2017-09-21 |
| 2 | 1.1 | **设计** |  |  | start no earlier than 2017-09-22 |
| 3 |  | 架构设计 |  | 100% | start no earlier than 2017-09-22 |
| 4 |  | 原型设计 |  | 100% | start no earlier than 2017-09-26 |
| 5 | 1.2 | **编码** |  |  | start no earlier than 2017-09-25 |
| 6 | 1.2.1 | **第一阶段** |  |  | start no earlier than 2017-09-26 |
| 7 | 1.2.1.1 | **集群管理** |  |  | start no earlier than 2017-09-25 |
| 8 |  | 集群概览 |  | 100% | start no earlier than 2017-09-25 |
| 9 |  | 主机列表 | 8 | 100% |  |
| 10 |  | 主机详情 | 9 | 100% | start no earlier than 2017-09-25 |
| 11 | 1.2.1.2 | **首页** |  |  |  |
| 12 |  | 待办任务 |  | 100% | start no earlier than 2017-09-25 |
| 13 |  | 资料文库 | 12 |  | start no earlier than 2017-09-22 |
| 14 | 1.2.1.3 | **开发管理** | 7 |  |  |
| 15 |  | 项目管理 |  |  | start no earlier than 2017-09-25 |
| 16 | 1.2.1.4 | **运维监控** | 7 |  | start no earlier than 2017-09-25 |
| 17 |  | 正式环境监控 |  |  | start no earlier than 2017-09-27 |
| 18 |  | 正式环境部署 | 17 |  | start no earlier than 2017-09-26 |
| 19 |  | 灰度环境监控 |  |  |  |
| 20 |  | 灰度环境发布 | 19 |  | start no earlier than 2017-09-26 |
| 21 |  | 蓝绿部署 | 20 |  | start no earlier than 2017-09-26 |
| 22 |  | 流量分配 | 21 |  | start no earlier than 2017-09-26 |
| 23 |  | 回滚 | 22 |  | start no earlier than 2017-09-26 |
| 24 |  | 策略配置 |  |  | start no earlier than 2017-09-25 |
| 25 | 1.2.1.5 | **能力开放** | 16 |  | start no earlier than 2017-10-09 |
| 26 |  | 镜像仓库 |  |  | start no earlier than 2017-09-26 |
| 27 |  | 镜像详情 | 26 |  | start no earlier than 2017-09-26 |
| 28 |  | 应用市场 | 27 |  | start no earlier than 2017-10-11 |
| 29 | 1.2.1.6 | **服务管理** | 16 |  | start no earlier than 2017-10-09 |
| 30 |  | 资源概览 |  |  | start no earlier than 2017-09-26 |
| 31 |  | 资源列表 | 30 |  | start no earlier than 2017-09-26 |
| 32 |  | 负载均衡 |  |  | start no earlier than 2017-09-26 |
| 33 | 1.2.2 | **第二阶段** | 6 |  | start no earlier than 2017-09-26 |
| 34 | 1.2.2.1 | **运维监控** |  |  | start no earlier than 2017-09-26 |
| 35 |  | 流量监控 |  |  | start no earlier than 2017-09-26 |
| 36 |  | 动态扩缩容 |  |  | start no earlier than 2017-09-26 |
| 37 |  | 负载均衡 |  |  | start no earlier than 2017-09-26 |

## Version 2 (saved 2017-09-27)

Note of the change: update plan

Removed: 32 负载均衡

Changed:

| ID | Task | Predecessors | Other |
| --- | --- | --- | --- |
| 19 | 灰度环境监控 |  | resources 黄浩浩 → 向勇 |
| 20 | 灰度环境发布 |  | resources 黄浩浩 → 向勇 |
| 22 | 动态扩缩容 | none → 21 |  |
| 23 | 蓝绿部署 | 20 → 22 | resources 向勇 → 文安国 |
| 24 | 部署回滚 | 36 → 23 | was named 回滚; resources 向勇 → 文安国 |
| 35 | 负载均衡 |  | constraint start no earlier than 2017-09-26 → start no earlier than 2017-10-13 |
| 36 | 流量分配 | 23 → none | resources 向勇 → 文安国 |

## Version 3 (saved 2017-09-28)

Note of the change: Merge branch 'dev' of http://192.168.9.68/cmcc/develop-base into dev

Changed:

| ID | Task | Other |
| --- | --- | --- |
| 19 | 灰度环境监控 | resources 向勇 → 黄浩浩 |
| 20 | 灰度环境发布 | resources 向勇 → 黄浩浩 |

## Version 4 (saved 2017-10-13)

Note of the change: Merge branch 'dev' of http://192.168.9.68/cmcc/develop-base into dev

Added:

| ID | Task | Constraint | Resources |
| --- | --- | --- | --- |
| 30 | 网站首页 | start no earlier than 2017-10-11 | 刘佳莉 |
| 38 | **实时流处理** | start no earlier than 2017-09-29 |  |
| 39 | HDFS安装调试 | start no earlier than 2017-09-29 |  |
| 40 | storm安装调试 | start no earlier than 2017-09-29 |  |
| 41 | spark安装调试 | start no earlier than 2017-09-29 |  |

Changed:

| ID | Task | Predecessors | Other |
| --- | --- | --- | --- |
| 26 | **能力开放** | 16 → none | constraint start no earlier than 2017-10-09 → start no earlier than 2017-10-07 |
